# Software Development

How a schedule from MS Project changed from version to version. A marks actual dates.

## Version 1 (saved 2014-06-10)

Note of the change: Added Project Plan into GitHub Repository

| ID | WBS | Task | Duration | Start | Finish | Predecessors | Total float |
| --- | --- | --- | --- | --- | --- | --- | --- |
| 1 | 1 | **Inception** | 33.5d | 2014-02-17 | 2014-04-03 |  | 0d |
| 2 | 1.1 | **Scope** | 14.5d | 2014-02-17 | 2014-03-07 |  |  |
| 3 |  | Determine project scope | 4h | 2014-02-17 | 2014-02-17 |  | 0d |
| 4 |  | Write Scope Document | 12d | 2014-02-17 | 2014-03-05 | 3 | 0d |
| 5 |  | Define preliminary resources | 1d | 2014-03-05 | 2014-03-06 | 4 | 0d |
| 6 |  | Secure core resources | 1d | 2014-03-06 | 2014-03-07 | 5 | 0d |
| 7 |  | Scope complete | 0d | 2014-03-07 | 2014-03-07 | 6 | 0d |
| 8 | 1.2 | **Software Requirements** | 19d | 2014-03-07 | 2014-04-03 |  | 0d |
| 9 |  | Conduct needs analysis | 5d | 2014-03-07 | 2014-03-14 | 7 | 0d |
| 10 |  | Draft preliminary software specifications | 3d | 2014-03-14 | 2014-03-19 | 9 | 0d |
| 11 |  | Develop preliminary budget | 2d | 2014-03-19 | 2014-03-21 | 10 | 0d |
| 12 |  | Review software specifications/budget with team | 4h | 2014-03-21 | 2014-03-21 | 11 | 0d |
| 13 |  | Incorporate feedback on software specifications | 1d | 2014-03-24 | 2014-03-24 | 12 | 0d |
| 14 |  | Develop delivery timeline | 1d | 2014-03-25 | 2014-03-25 | 13 | 0d |
| 15 |  | Create Project Plan | 5d | 2014-03-26 | 2014-04-01 | 14 | 0d |
| 16 |  | Obtain approvals to proceed (concept, timeline, budget) | 4h | 2014-04-02 | 2014-04-02 | 15 | 0d |
| 17 |  | Secure required resources | 1d | 2014-04-02 | 2014-04-03 | 16, 15 | 0d |
| 18 |  | Analysis complete | 0d | 2014-04-03 | 2014-04-03 | 17 | 0d |
| 19 | 2 | **Elaboration** | 16.5d | 2014-04-03 | 2014-04-25 |  | 0d |
| 20 |  | Review preliminary software specifications | 2d | 2014-04-03 | 2014-04-07 | 18 | 0d |
| 21 |  | Develop functional specifications | 5d | 2014-04-07 | 2014-04-14 | 20 | 0d |
| 22 |  | Develop prototype based on functional specifications | 7d | 2014-04-14 | 2014-04-23 | 21 | 0d |
| 23 |  | Review functional specifications | 2d | 2014-04-23 | 2014-04-25 | 22 | 0d |
| 24 |  | Obtain approval to proceed | 4h | 2014-04-25 | 2014-04-25 | 23 | 0d |
| 25 |  | Design complete | 0d | 2014-04-25 | 2014-04-25 | 24 | 0d |
| 26 | 3 | **Construction** | 28.5d | 2014-04-28 | 2014-06-05 |  | 0d |
| 27 |  | Re-Review functional specifications | 1d | 2014-04-28 | 2014-04-28 | 25 | 0d |
| 28 | 3.2 | **Develop code for use case** | 21d | 2014-04-29 | 2014-05-27 | 27 | 0d |
| 29 | 3.2.1 | **Develop code for use case 1** | 10.5d | 2014-04-29 | 2014-05-13 |  | 0d |
| 30 |  | Create and Refine Homepage | 4h | 2014-04-29 | 2014-04-29 |  | 0d |
| 31 |  | Create webpages using functionality based on use cases | 1d | 2014-04-29 | 2014-04-30 | 30 | 0d |
| 32 |  | create content needed for each page | 6d | 2014-04-30 | 2014-05-08 | 31 | 0d |
| 33 |  | Create links/connections to pages | 1d | 2014-05-08 | 2014-05-09 | 32 | 0d |
| 34 |  | Developer testing (primary debugging) | 2d | 2014-05-09 | 2014-05-13 | 33 | 0d |
| 35 | 3.2.2 | **Develop code for use case 2** | 10.5d | 2014-05-13 | 2014-05-27 | 29 | 0d |
| 36 |  | Create and Refine Homepage | 4h | 2014-05-13 | 2014-05-13 |  | 0d |
| 37 |  | Create webpages using functionality based on use cases | 1d | 2014-05-14 | 2014-05-14 | 36 | 0d |
| 38 |  | create content needed for each page | 6d | 2014-05-15 | 2014-05-22 | 37 | 0d |
| 39 |  | Create links/connections to pages | 1d | 2014-05-23 | 2014-05-23 | 38 | 0d |
| 40 |  | Developer testing (primary debugging) | 2d | 2014-05-26 | 2014-05-27 | 39 | 0d |
| 41 |  | Development complete | 0d | 2014-05-27 | 2014-05-27 | 35, 28 | 0d |
| 42 | 3.3 | **Testing** | 6.5d | 2014-05-28 | 2014-06-05 |  | 0d |
| 43 | 3.3.1 | **Unit Testing** | 6.5d | 2014-05-28 | 2014-06-05 |  | 0d |
| 44 |  | Review modular code | 1.5d | 2014-05-28 | 2014-05-29 | 41 | 0d |
| 45 |  | Test component modules to product specifications | 1d | 2014-05-29 | 2014-05-30 | 41, 44 | 0d |
| 46 |  | Identify anomalies to product specifications | 8h | 2014-05-30 | 2014-06-02 | 45 | 0d |
| 47 |  | Modify code | 2d | 2014-06-02 | 2014-06-04 | 46 | 0d |
| 48 |  | Re-test modified code | 1d | 2014-06-04 | 2014-06-05 | 47 | 0d |
| 49 |  | Unit testing complete | 0d | 2014-06-05 | 2014-06-05 | 48 | 8d |
| 50 |  | Complete Testing | 0d | 2014-06-05 | 2014-06-05 | 48 | 0d |
| 51 | 4 | **Transition** | 8d | 2014-06-05 | 2014-06-17 |  | 0d |
| 52 | 4.1 | **Deployment** | 5d | 2014-06-05 | 2014-06-12 |  | 0d |
| 53 |  | Determine final deployment strategy | 1d | 2014-06-05 | 2014-06-06 | 50 | 0d |
| 54 |  | Develop deployment methodology | 1d | 2014-06-06 | 2014-06-09 | 53 | 0d |
| 55 |  | Secure deployment resources | 1d | 2014-06-09 | 2014-06-10 | 54 | 0d |
| 56 |  | Train staff | 1d | 2014-06-10 | 2014-06-11 | 55 | 0d |
| 57 |  | Deploy software | 1d | 2014-06-11 | 2014-06-12 | 56 | 0d |
| 58 |  | Deployment complete | 0d | 2014-06-12 | 2014-06-12 | 57 | 0d |
| 59 | 4.2 | **Post Implementation Review** | 3d | 2014-06-12 | 2014-06-17 |  | 0d |
| 60 |  | Document lessons learned | 1d | 2014-06-12 | 2014-06-13 | 58 | 0d |
| 61 |  | Distribute to team members | 1d | 2014-06-13 | 2014-06-16 | 60 | 0d |
| 62 |  | Create software maintenance team | 1d | 2014-06-16 | 2014-06-17 | 61 | 0d |
| 63 |  | Post implementation review complete | 0d | 2014-06-17 | 2014-06-17 | 62 | 0d |

## Version 2 (saved 2014-06-17)

Note of the change: Update of Rent-a-car Project Plan

Last finish 2014-06-17 → 2014-10-14 (+119d). Complete tasks 0 → 22.

Changed:

| ID | Task | Start | Finish | Duration | Complete | Total float | Other |
| --- | --- | --- | --- | --- | --- | --- | --- |
| 1 | **Inception** | 2014-02-17 A | 2014-04-03 → 2014-04-08 (+5d) | 33.5d → 36.25d | 0% → 94% | 0d → 134.88d |  |
| 2 | **Scope** | 2014-02-17 A | 2014-03-07 A |  | 0% → 100% |  |  |
| 3 | Determine project scope | 2014-02-17 A | 2014-02-17 A |  | 0% → 100% | 0d → none |  |
| 4 | Write Scope Document | 2014-02-17 A | 2014-03-05 A |  | 0% → 100% | 0d → none |  |
| 5 | Define preliminary resources | 2014-03-05 A | 2014-03-06 A |  | 0% → 100% | 0d → none |  |
| 6 | Secure core resources | 2014-03-06 A | 2014-03-07 A |  | 0% → 100% | 0d → none |  |
| 7 | Scope complete | 2014-03-07 A | 2014-03-07 A |  | 0% → 100% | 0d → none |  |
| 8 | **Software Requirements** | 2014-03-07 A | 2014-04-03 → 2014-04-08 (+5d) | 19d → 21.75d | 0% → 91% | 0d → 134.88d |  |
| 9 | Conduct needs analysis | 2014-03-07 A | 2014-03-14 A |  | 0% → 100% | 0d → none |  |
| 10 | Draft preliminary software specifications | 2014-03-14 A | 2014-03-19 A |  | 0% → 100% | 0d → none |  |
| 11 | Develop preliminary budget | 2014-03-19 A | 2014-03-21 A |  | 0% → 100% | 0d → none |  |
| 12 | Review software specifications/budget with team | 2014-03-21 A | 2014-03-21 A |  | 0% → 100% | 0d → none |  |
| 13 | Incorporate feedback on software specifications | 2014-03-24 A | 2014-03-24 A |  | 0% → 100% | 0d → none |  |
| 14 | Develop delivery timeline | 2014-03-25 A | 2014-03-25 A |  | 0% → 100% | 0d → none |  |
| 15 | Create Project Plan | 2014-03-26 A | 2014-04-01 → 2014-04-08 (+7d) | 5d → 8d | 0% → 75% | 0d → 134.88d | resources none → Project Manager |
| 16 | Obtain approvals to proceed (concept, timeline, budget) | 2014-04-02 A | 2014-04-02 A | 4h → 2h | 0% → 100% | 0d → none |  |
| 17 | Secure required resources | 2014-04-02 A | 2014-04-03 A |  | 0% → 100% | 0d → none |  |
| 18 | Analysis complete | 2014-04-03 A | 2014-04-03 A |  | 0% → 100% | 0d → none |  |
| 19 | **Elaboration** | 2014-04-03 A |  |  | 0% → 91% | 0d → 121.38d |  |
| 20 | Review preliminary software specifications | 2014-04-03 A | 2014-04-07 A |  | 0% → 100% | 0d → none |  |
| 21 | Develop functional specifications | 2014-04-07 A | 2014-04-14 → 2014-04-09 A (-5d) | 5d → 2d | 0% → 100% | 0d → none |  |
| 22 | Develop prototype based on functional specifications | 2014-04-14 A | 2014-04-23 → 2014-04-21 (-2d) | 7d → 5d | 0% → 80% | 0d → 125.88d |  |
| 23 | Review functional specifications | 2014-04-23 A | 2014-04-25 A |  | 0% → 100% | 0d → none |  |
| 24 | Obtain approval to proceed | 2014-04-25 A | 2014-04-25 A |  | 0% → 100% | 0d → none |  |
| 25 | Design complete | 2014-04-25 A | 2014-04-25 A |  | 0% → 100% | 0d → none |  |
| 26 | **Construction** | 2014-04-28 → 2014-04-25 A (-3d) | 2014-06-05 → 2014-10-02 (+119d) | 28.5d → 113.38d | 0% → 34% | 0d → 8d |  |
| 27 | Re-Review functional specifications | 2014-04-28 → 2014-04-25 A (-3d) | 2014-04-28 A |  | 0% → 100% | 0d → none |  |
| 28 | **Develop code for use case** | 2014-04-29 → 2014-04-28 A (-1d) | 2014-05-27 → 2014-09-23 (+119d) | 21d → 105.88d | 0% → 37% |  | resources Developer → none |
| 29 | **Develop code for use case 1** | 2014-04-29 → 2014-04-28 A (-1d) | 2014-05-13 → 2014-06-19 (+37d) | 10.5d → 37.88d | 0% → 46% |  |  |
| 30 | Create and Refine Homepage | 2014-04-29 → 2014-04-28 A (-1d) | 2014-04-29 A |  | 0% → 100% | 0d → none | resources none → Developer |
| 31 | Create webpages using functionality based on use cases | 2014-04-29 A | 2014-04-30 → 2014-05-15 (+15d) | 1d → 6.75d | 0% → 25% | 0d → 25.31d | constraint none → finish no earlier than 2014-05-07; resources none → Developer |
| 32 | create content needed for each page | 2014-04-30 A | 2014-05-08 → 2014-05-14 A (+6d) | 6d → 10.75d | 0% → 100% | 0d → none | constraint none → finish no earlier than 2014-05-14; resources none → Developer |
| 33 | Create links/connections to pages | 2014-05-08 A | 2014-05-09 → 2014-06-04 (+26d) | 1d → 20d | 0% → 25% | 0d → 9.12d | constraint none → finish no earlier than 2014-06-04; resources none → Developer |
| 34 | Developer testing (primary debugging) | 2014-05-09 → 2014-06-17 A (+39d) | 2014-05-13 → 2014-06-19 (+37d) |  | 0% → 25% |  | resources none → Developer |
| 35 | **Develop code for use case 2** | 2014-05-13 → 2014-06-19 (+37d) | 2014-05-27 → 2014-09-23 (+119d) | 10.5d → 68d |  |  |  |
| 36 | Create and Refine Homepage | 2014-05-13 → 2014-06-19 (+37d) | 2014-05-13 → 2014-07-15 (+63d) |  |  |  | resources none → Developer |
| 37 | Create webpages using functionality based on use cases | 2014-05-14 → 2014-07-15 (+62d) | 2014-05-14 → 2014-08-07 (+85d) |  |  |  | resources none → Developer |
| 38 | create content needed for each page | 2014-05-15 → 2014-08-07 (+84d) | 2014-05-22 → 2014-09-02 (+103d) |  |  |  | resources none → Developer |
| 39 | Create links/connections to pages | 2014-05-23 → 2014-09-03 (+103d) | 2014-05-23 → 2014-09-19 (+119d) |  |  |  | resources none → Developer |
| 40 | Developer testing (primary debugging) | 2014-05-26 → 2014-09-19 (+116d) | 2014-05-27 → 2014-09-23 (+119d) |  |  |  | resources none → Developer |
| 41 | Development complete | 2014-05-27 → 2014-09-23 (+119d) | 2014-05-27 → 2014-09-23 (+119d) |  |  |  |  |
| 42 | **Testing** | 2014-05-28 → 2014-09-23 (+118d) | 2014-06-05 → 2014-10-02 (+119d) |  |  |  |  |
| 43 | **Unit Testing** | 2014-05-28 → 2014-09-23 (+118d) | 2014-06-05 → 2014-10-02 (+119d) |  |  |  |  |
| 44 | Review modular code | 2014-05-28 → 2014-09-23 (+118d) | 2014-05-29 → 2014-09-25 (+119d) |  |  |  |  |
| 45 | Test component modules to product specifications | 2014-05-29 → 2014-09-25 (+119d) | 2014-05-30 → 2014-09-26 (+119d) |  |  |  |  |
| 46 | Identify anomalies to product specifications | 2014-05-30 → 2014-09-26 (+119d) | 2014-06-02 → 2014-09-29 (+119d) |  |  |  |  |
| 47 | Modify code | 2014-06-02 → 2014-09-29 (+119d) | 2014-06-04 → 2014-10-01 (+119d) |  |  |  |  |
| 48 | Re-test modified code | 2014-06-04 → 2014-10-01 (+119d) | 2014-06-05 → 2014-10-02 (+119d) |  |  |  |  |
| 49 | Unit testing complete | 2014-06-05 → 2014-10-02 (+119d) | 2014-06-05 → 2014-10-02 (+119d) |  |  |  |  |
| 50 | Complete Testing | 2014-06-05 → 2014-10-02 (+119d) | 2014-06-05 → 2014-10-02 (+119d) |  |  |  |  |
| 51 | **Transition** | 2014-06-05 → 2014-10-02 (+119d) | 2014-06-17 → 2014-10-14 (+119d) |  |  |  |  |
| 52 | **Deployment** | 2014-06-05 → 2014-10-02 (+119d) | 2014-06-12 → 2014-10-09 (+119d) |  |  |  |  |
| 53 | Determine final deployment strategy | 2014-06-05 → 2014-10-02 (+119d) | 2014-06-06 → 2014-10-03 (+119d) |  |  |  |  |
| 54 | Develop deployment methodology | 2014-06-06 → 2014-10-03 (+119d) | 2014-06-09 → 2014-10-06 (+119d) |  |  |  |  |
| 55 | Secure deployment resources | 2014-06-09 → 2014-10-06 (+119d) | 2014-06-10 → 2014-10-07 (+119d) |  |  |  |  |
| 56 | Train staff | 2014-06-10 → 2014-10-07 (+119d) | 2014-06-11 → 2014-10-08 (+119d) |  |  |  |  |
| 57 | Deploy software | 2014-06-11 → 2014-10-08 (+119d) | 2014-06-12 → 2014-10-09 (+119d) |  |  |  |  |
| 58 | Deployment complete | 2014-06-12 → 2014-10-09 (+119d) | 2014-06-12 → 2014-10-09 (+119d) |  |  |  |  |
| 59 | **Post Implementation Review** | 2014-06-12 → 2014-10-09 (+119d) | 2014-06-17 → 2014-10-14 (+119d) |  |  |  |  |
| 60 | Document lessons learned | 2014-06-12 → 2014-10-09 (+119d) | 2014-06-13 → 2014-10-10 (+119d) |  |  |  |  |
| 61 | Distribute to team members | 2014-06-13 → 2014-10-10 (+119d) | 2014-06-16 → 2014-10-13 (+119d) |  |  |  |  |
| 62 | Create software maintenance team | 2014-06-16 → 2014-10-13 (+119d) | 2014-06-17 → 2014-10-14 (+119d) |  |  |  |  |
| 63 | Post implementation review complete | 2014-06-17 → 2014-10-14 (+119d) | 2014-06-17 → 2014-10-14 (+119d) |  |  |  |  |
